# توسعه سامانه ارائه خدمات نئوبانک

How a schedule from MS Project changed from version to version. A marks actual dates.

## Version 1 (data date 2022-05-26, saved 2022-07-22, file Phase 3 - current1.mpp)

| ID | WBS | Task | Duration | Start | Finish | Predecessors | Complete | Total float | Constraint |
| --- | --- | --- | --- | --- | --- | --- | --- | --- | --- |
| 1 | 1 | **برنامه‌ریزی** | 24d | 2022-03-26 A | 2022-04-25 A |  | 100% |  |  |
| 2 | 1.1 | **طراحی و برنامه‌ریزی پروژه** | 18.25d | 2022-03-26 A | 2022-04-17 A |  | 100% |  |  |
| 3 |  | تنظیم منشور پروژه | 5d | 2022-03-26 A | 2022-03-30 A |  | 100% |  | must start on 2022-03-26 |
| 4 |  | زمان‌سنجی فعالیت‌ها | 10d | 2022-03-31 A | 2022-04-13 A | 3 | 100% |  |  |
| 5 |  | زمان‌بندی فعالیت‌ها | 5d | 2022-04-11 A | 2022-04-17 A | 4 | 100% |  | must finish on 2022-04-17 |
| 6 | 1.2 | **برنامه‌ریزی منابع** | 19d | 2022-03-31 A | 2022-04-25 A |  | 100% |  |  |
| 7 |  | برنامه‌ریزی بودجه | 8d | 2022-03-31 A | 2022-04-11 A | 3 | 100% |  |  |
| 8 |  | برنامه‌ریزی منابع انسانی | 5d | 2022-04-18 A | 2022-04-25 A | 7SS+2d, 5 | 100% |  | must finish on 2022-04-25 |
| 9 | 2 | **فعالیت‌های حقوقی** | 131.5d | 2022-04-04 A | 2022-09-22 |  | 26% | 0d |  |
| 10 | 2.1 | **کسب مجوزهای بانکی** | 50d | 2022-07-04 | 2022-09-07 |  |  | -8.5d |  |
| 11 |  | کسب مجوز فعالیت از بانک مرکزی | 30d | 2022-07-04 | 2022-08-14 | 14 |  | -8.5d |  |
| 12 |  | عضویت در شبکه شتاب و شاپرک | 20d | 2022-08-15 | 2022-09-07 | 11 |  | -8.5d |  |
| 13 | 2.2 | **کسب مجوزهای تجاری** | 131.5d | 2022-04-04 A | 2022-09-22 |  | 38% | 0d |  |
| 14 |  | ثبت برند | 70d | 2022-04-04 A | 2022-07-04 | 3SS+7d | 57% | -8.5d | start no earlier than 2022-04-04 |
| 15 |  | کسب نماد اعتماد الکترونیکی | 15d | 2022-09-04 | 2022-09-22 | 12 |  | -5d | finish no later than 2022-09-22 |
| 16 |  | کسب مجوز کشوری کسب‌وکار مجازی | 20d | 2022-08-29 | 2022-09-22 | 15SS |  | -5d | finish no later than 2022-09-22 |
| 17 |  | اخذ مجوزهای قانونی | 0d | 2022-09-22 | 2022-09-22 | 16, 15 |  | 181d | start no earlier than 2022-09-22 |
| 18 | 4 | **راه‌اندازی پلتفرم** | 236.25d | 2022-06-06 | 2023-04-11 |  |  | 0d |  |
| 19 | 4.1 | **طراحی وب‌سایت** | 85d | 2022-06-06 | 2022-09-22 |  |  | 0d |  |
| 20 |  | Back-end طراحی | 1.5mo | 2022-06-06 | 2022-07-25 | 8 |  | 0d | must start on 2022-06-06 |
| 21 |  | طراحی گرافیکی وب‌سایت | 2.5mo | 2022-06-29 | 2022-09-22 | 20SS+20d |  | 112.75d |  |
| 22 | 4.2 | **طراحی نرم‌افزار** | 143d | 2022-06-06 | 2022-12-06 |  |  | 0.75d |  |
| 23 |  | تحقیق و توسعه | 3mo | 2022-06-06 | 2022-09-13 | 20SS |  | 0.75d |  |
| 24 |  | طراحی پایگاه داده | 40d | 2022-07-26 | 2022-09-14 | 20 |  | 0d | must finish on 2022-09-14 |
| 25 |  | API طراحی | 50d | 2022-07-26 | 2022-10-19 | 24SS |  | 161.75d |  |
| 26 |  | UI/UX & GUI طراحی | 2.5mo | 2022-09-13 | 2022-12-06 | 23 |  | 0.75d |  |
| 27 | 4.3 | **امنیت** | 39d | 2022-09-15 | 2022-11-06 |  |  | 0d |  |
| 28 |  | طراحی سیستم ارسال رمز پویا | 15d | 2022-09-15 | 2022-10-08 | 12, 24 |  | 6.5d |  |
| 29 |  | Two factor authentication طراحی پروتکل | 10d | 2022-09-15 | 2022-10-01 | 24 |  | 11.5d |  |
| 30 |  | طراحی سیستم احراز هویت | 20d | 2022-09-18 | 2022-10-15 | 24 |  | 0d | must finish on 2022-10-15 |
| 31 |  | پیاده‌سازی استانداردهای امنیتی بانک مرکزی | 7d | 2022-10-16 | 2022-10-24 | 11, 28, 29, 30 |  | 0d | must finish on 2022-10-24 |
| 32 |  | تست امنیت | 10d | 2022-10-25 | 2022-11-06 | 31 |  | 0d | must finish on 2022-11-06 |
| 33 | 4.4 | **تست نرم‌افزار** | 28d | 2022-12-06 | 2023-01-10 |  |  | 0.75d |  |
| 34 |  | Unit Testing | 7d | 2022-12-06 | 2022-12-14 | 26 |  | 0.75d |  |
| 35 |  | تست یکپارچگی | 7d | 2022-12-14 | 2022-12-24 | 34 |  | 0.75d |  |
| 36 |  | System Testing | 7d | 2022-12-24 | 2023-01-02 | 35 |  | 0.75d |  |
| 37 |  | (UAT) آزمون پذیرش کاربر | 7d | 2023-01-02 | 2023-01-10 | 36 |  | 0.75d |  |
| 38 | 4.5 | **یکپارچه‌سازی نرم‌افزار و وب‌سایت** | 41.25d | 2023-01-10 | 2023-03-05 |  |  | 0.5d |  |
| 39 |  | پیاده‌سازی هویت بصری یکپارچه و مشخص‌شده | 1mo | 2023-01-10 | 2023-02-13 | 37 |  | 0.75d |  |
| 40 |  | اتصال نرم‌افزار و وب‌سایت به پایگاه داده | 15d | 2023-02-14 | 2023-03-05 | 21, 26, 24, 39 |  | 0.5d | finish no earlier than 2023-03-05 |
| 41 | 4.6 | **اجرا** | 24d | 2023-03-06 | 2023-04-11 |  |  | 0d |  |
| 42 |  | برگزاری جلسه با کادر اجرایی پروژه | 0d | 2023-03-06 | 2023-03-06 |  |  | 0.5d | start no earlier than 2023-03-06 |
| 43 |  | اجرای اولیه در بازارهای خرد | 10d | 2023-03-06 | 2023-03-19 | 40, 32, 16, 15, 42 |  | 0d | must finish on 2023-03-19 |
| 44 |  | اجرای ثانویه در بازار اصلی | 13d | 2023-03-25 | 2023-04-11 | 43 |  | 0d | must finish on 2023-04-11 |
| 45 |  | پایان فاز راه­اندازی و اجرای پلتفرم | 0d | 2023-05-06 | 2023-05-06 | 44 |  | 13.5d | start no earlier than 2023-05-06 |
| 46 |  | تهیه گزارشات مالی پروژه | 0d | 2023-05-06 | 2023-05-06 | 45 |  | 13.5d | start no earlier than 2023-03-11 |
| 47 | 7 | **بازاریابی** | 35d | 2023-03-25 | 2023-05-11 |  |  | 3.25d |  |
| 48 | 7.1 | **تحقیقات بازار** | 20d | 2023-03-25 | 2023-04-20 |  |  | 3.25d |  |
| 49 |  | تحلیل رقبا | 10d | 2023-03-25 | 2023-04-08 | 23SS |  | 3.25d | start no earlier than 2023-03-25 |
| 50 |  | بررسی مشتریان هدف | 10d | 2023-04-08 | 2023-04-20 | 49 |  | 3.25d |  |
| 51 | 7.2 | **تبلیغات** | 15d | 2023-04-20 | 2023-05-11 |  |  | 3.25d |  |
| 52 |  | تبلیغات مجازی | 15d | 2023-04-20 | 2023-05-11 | 50, 7 |  | 3.25d |  |
| 53 |  | تبلیغات محیطی | 15d | 2023-04-20 | 2023-05-11 | 52SS |  | 3.25d |  |
| 54 | 8 | **خاتمه پروژه** | 5d | 2023-05-15 | 2023-05-22 |  |  | 0d |  |
| 55 |  | جمع‌بندی و جمع‌آوری گزارشات | 5d | 2023-05-15 | 2023-05-22 | 53, 44, 52 |  | 0d | must finish on 2023-05-22 |

## Version 2 (data date 2022-07-26, saved 2022-07-22, file Phase 3 - current2.mpp)

Last finish stays 2023-05-22. Complete tasks 5 → 7.

Changed:

| ID | Task | Start | Finish | Duration | Complete | Total float | Other |
| --- | --- | --- | --- | --- | --- | --- | --- |
| 1 | **برنامه‌ریزی** |  | 2022-04-25 A → 2022-05-01 A (+6d) | 24d → 28.25d |  |  |  |
| 6 | **برنامه‌ریزی منابع** |  | 2022-04-25 A → 2022-05-01 A (+6d) | 19d → 23.25d |  |  |  |
| 8 | برنامه‌ریزی منابع انسانی | 2022-04-18 A → 2022-04-21 A (+3d) | 2022-04-25 A → 2022-05-01 A (+6d) | 5d → 7d |  |  | constraint must finish on 2022-04-25 → none |
| 9 | **فعالیت‌های حقوقی** |  |  |  | 26% → 52% |  |  |
| 10 | **کسب مجوزهای بانکی** | 2022-07-04 → 2022-07-08 A (+4d) | 2022-09-07 → 2022-09-19 (+12d) | 50d → 55d | 0% → 23% | -8.5d → -16.75d |  |
| 11 | کسب مجوز فعالیت از بانک مرکزی | 2022-07-04 → 2022-07-08 A (+4d) | 2022-08-14 → 2022-08-24 (+10d) | 30d → 35d | 0% → 36% | -8.5d → -16.75d |  |
| 12 | عضویت در شبکه شتاب و شاپرک | 2022-08-15 → 2022-08-24 (+9d) | 2022-09-07 → 2022-09-19 (+12d) |  |  | -8.5d → -16.75d |  |
| 13 | **کسب مجوزهای تجاری** |  |  |  | 38% → 67% |  |  |
| 14 | ثبت برند |  | 2022-07-04 A |  | 57% → 100% | -8.5d → none |  |
| 18 | **راه‌اندازی پلتفرم** | 2022-06-06 A |  |  | 0% → 19% | 0d → 29.75d |  |
| 19 | **طراحی وب‌سایت** | 2022-06-06 A | 2022-09-22 → 2022-10-16 (+24d) | 85d → 101d | 0% → 48% | 0d → 96.75d |  |
| 20 | Back-end طراحی | 2022-06-06 A | 2022-07-25 A |  | 0% → 100% | 0d → none |  |
| 21 | طراحی گرافیکی وب‌سایت | 2022-06-29 → 2022-07-01 A (+2d) | 2022-09-22 → 2022-10-16 (+24d) | 2.5mo → 80d | 0% → 23% | 112.75d → 96.75d |  |
| 22 | **طراحی نرم‌افزار** | 2022-06-06 A |  |  | 0% → 17% | 0.75d → 123d |  |
| 23 | تحقیق و توسعه | 2022-06-06 A |  |  | 0% → 50% |  |  |
| 28 | طراحی سیستم ارسال رمز پویا | 2022-09-15 → 2022-09-19 (+4d) | 2022-10-08 → 2022-10-11 (+3d) |  |  | 6.5d → 4.25d |  |

## Version 3 (data date 2022-09-26, saved 2022-07-22, file Phase 3 - current3.mpp)

Last finish stays 2023-05-22. Complete tasks 7 → 14.

Changed:

| ID | Task | Start | Finish | Duration | Complete | Total float | Other |
| --- | --- | --- | --- | --- | --- | --- | --- |
| 9 | **فعالیت‌های حقوقی** |  | 2022-09-22 A |  | 52% → 100% | 0d → none |  |
| 10 | **کسب مجوزهای بانکی** |  | 2022-09-19 A |  | 23% → 100% | -16.75d → none |  |
| 11 | کسب مجوز فعالیت از بانک مرکزی |  | 2022-08-24 A |  | 36% → 100% | -16.75d → none |  |
| 12 | عضویت در شبکه شتاب و شاپرک | 2022-08-24 A | 2022-09-19 A |  | 0% → 100% | -16.75d → none |  |
| 13 | **کسب مجوزهای تجاری** |  | 2022-09-22 A |  | 67% → 100% | 0d → none |  |
| 15 | کسب نماد اعتماد الکترونیکی | 2022-09-04 A | 2022-09-22 A |  | 0% → 100% | -11.75d → none |  |
| 16 | کسب مجوز کشوری کسب‌وکار مجازی | 2022-08-29 A | 2022-09-22 A |  | 0% → 100% | -5d → none |  |
| 17 | اخذ مجوزهای قانونی | 2022-09-22 A | 2022-09-22 A |  | 0% → 100% | 181d → none |  |
| 18 | **راه‌اندازی پلتفرم** |  |  |  | 19% → 54% |  |  |
| 19 | **طراحی وب‌سایت** |  |  |  | 48% → 87% |  |  |
| 21 | طراحی گرافیکی وب‌سایت |  |  |  | 23% → 81% |  |  |
| 22 | **طراحی نرم‌افزار** |  | 2022-12-06 → 2022-12-25 (+19d) | 143d → 158d | 17% → 67% | 123d → 108d |  |
| 23 | تحقیق و توسعه |  | 2022-09-13 A |  | 50% → 100% | 0.75d → none |  |
| 24 | طراحی پایگاه داده | 2022-07-26 A | 2022-09-14 A |  | 0% → 100% | 0d → none |  |
| 25 | API طراحی | 2022-07-26 A |  |  | 0% → 80% |  |  |
| 26 | UI/UX & GUI طراحی | 2022-09-13 A | 2022-12-06 → 2022-12-25 (+19d) | 2.5mo → 80d | 0% → 10% | 0.75d → -14.25d |  |
| 27 | **امنیت** | 2022-09-15 A |  |  | 0% → 24% |  |  |
| 28 | طراحی سیستم ارسال رمز پویا | 2022-09-19 A |  |  | 0% → 28% |  |  |
| 29 | Two factor authentication طراحی پروتکل | 2022-09-15 A |  |  | 0% → 65% |  |  |
| 30 | طراحی سیستم احراز هویت | 2022-09-18 A | 2022-10-15 → 2022-10-24 (+9d) | 20d → 27d | 0% → 21% | 0d → -6.25d | constraint must finish on 2022-10-15 → none |
| 33 | **تست نرم‌افزار** | 2022-12-06 → 2022-12-25 (+19d) | 2023-01-10 → 2023-01-29 (+19d) |  |  | 0.75d → -14.25d |  |
| 34 | Unit Testing | 2022-12-06 → 2022-12-25 (+19d) | 2022-12-14 → 2023-01-03 (+20d) |  |  | 0.75d → -14.25d |  |
| 35 | تست یکپارچگی | 2022-12-14 → 2023-01-03 (+20d) | 2022-12-24 → 2023-01-11 (+18d) |  |  | 0.75d → -14.25d |  |
| 36 | System Testing | 2022-12-24 → 2023-01-11 (+18d) | 2023-01-02 → 2023-01-21 (+19d) |  |  | 0.75d → -14.25d |  |
| 37 | (UAT) آزمون پذیرش کاربر | 2023-01-02 → 2023-01-21 (+19d) | 2023-01-10 → 2023-01-29 (+19d) |  |  | 0.75d → -14.25d |  |
| 38 | **یکپارچه‌سازی نرم‌افزار و وب‌سایت** | 2023-01-10 → 2023-01-29 (+19d) | 2023-03-05 → 2023-03-29 (+24d) | 41.25d → 41d |  | 0.5d → -14.25d |  |
| 39 | پیاده‌سازی هویت بصری یکپارچه و مشخص‌شده | 2023-01-10 → 2023-01-29 (+19d) | 2023-02-13 → 2023-03-05 (+20d) |  |  | 0.75d → -14.25d |  |
| 40 | اتصال نرم‌افزار و وب‌سایت به پایگاه داده | 2023-02-14 → 2023-03-05 (+19d) | 2023-03-05 → 2023-03-29 (+24d) |  |  | 0.5d → -14.25d |  |

## Version 4 (data date 2022-11-26, saved 2022-07-22, file Phase 3 - current4.mpp)

Last finish stays 2023-05-22. Complete tasks 14 → 20.

Changed:

| ID | Task | Start | Finish | Duration | Complete | Total float | Other |
| --- | --- | --- | --- | --- | --- | --- | --- |
| 18 | **راه‌اندازی پلتفرم** |  |  |  | 54% → 77% | 29.75d → 0d |  |
| 19 | **طراحی وب‌سایت** |  | 2022-10-16 A |  | 87% → 100% | 96.75d → none |  |
| 21 | طراحی گرافیکی وب‌سایت |  | 2022-10-16 A |  | 81% → 100% | 96.75d → none |  |
| 22 | **طراحی نرم‌افزار** |  |  |  | 67% → 90% | 108d → 0d |  |
| 25 | API طراحی |  | 2022-10-19 A |  | 80% → 100% | 161.75d → none |  |
| 26 | UI/UX & GUI طراحی |  |  |  | 10% → 70% |  |  |
| 27 | **امنیت** |  | 2022-11-06 → 2022-12-06 (+30d) | 39d → 64d | 24% → 90% | 0d → 69.25d |  |
| 28 | طراحی سیستم ارسال رمز پویا |  | 2022-10-11 A |  | 28% → 100% | 4.25d → none |  |
| 29 | Two factor authentication طراحی پروتکل |  | 2022-10-01 → 2022-10-08 A (+7d) | 10d → 15d | 65% → 100% | 11.5d → none |  |
| 30 | طراحی سیستم احراز هویت |  | 2022-10-24 A |  | 21% → 100% | -6.25d → none |  |
| 31 | پیاده‌سازی استانداردهای امنیتی بانک مرکزی | 2022-10-16 A | 2022-10-24 A |  | 0% → 100% | -6.25d → none |  |
| 32 | تست امنیت | 2022-10-25 A | 2022-11-06 → 2022-12-06 (+30d) | 10d → 35d | 0% → 72% | 0d → 69.25d | constraint must finish on 2022-11-06 → none |

## Version 5 (data date 2023-01-26, saved 2022-07-22, file Phase 3 - current5.mpp)

Last finish stays 2023-05-22. Complete tasks 20 → 23.

Changed:

| ID | Task | Start | Finish | Duration | Complete | Total float |
| --- | --- | --- | --- | --- | --- | --- |
| 18 | **راه‌اندازی پلتفرم** |  |  |  | 77% → 86% | 0d → 29.75d |
| 22 | **طراحی نرم‌افزار** |  |  |  | 90% → 96% | 0d → 108d |
| 25 | API طراحی | 2022-07-26 A → 2022-07-29 A (+3d) | 2022-10-19 A → 2022-11-05 (+17d) | 50d → 60d | 100% → 83% | none → 149.25d |
| 26 | UI/UX & GUI طراحی |  | 2022-12-25 A |  | 70% → 100% | -14.25d → none |
| 27 | **امنیت** |  | 2022-12-06 A |  | 90% → 100% | 69.25d → none |
| 32 | تست امنیت |  | 2022-12-06 A |  | 72% → 100% | 69.25d → none |
| 33 | **تست نرم‌افزار** | 2022-12-25 A | 2023-01-29 → 2023-02-07 (+9d) | 28d → 34.75d | 0% → 76% | -14.25d → 73.25d |
| 34 | Unit Testing | 2022-12-25 A | 2023-01-03 A |  | 0% → 100% | -14.25d → none |
| 35 | تست یکپارچگی | 2023-01-03 → 2023-01-07 A (+4d) | 2023-01-11 → 2023-01-18 (+7d) | 7d → 10d | 0% → 70% | -14.25d → 88.75d |
| 36 | System Testing | 2023-01-11 A | 2023-01-21 A |  | 0% → 100% | -14.25d → none |
| 37 | (UAT) آزمون پذیرش کاربر | 2023-01-21 → 2023-01-25 A (+4d) | 2023-01-29 → 2023-02-07 (+9d) | 7d → 10d | 0% → 48% | -14.25d → -21d |
| 38 | **یکپارچه‌سازی نرم‌افزار و وب‌سایت** | 2023-01-29 → 2023-02-07 (+9d) | 2023-03-29 → 2023-04-09 (+11d) |  |  | -14.25d → -21d |
| 39 | پیاده‌سازی هویت بصری یکپارچه و مشخص‌شده | 2023-01-29 → 2023-02-07 (+9d) | 2023-03-05 → 2023-03-14 (+9d) |  |  | -14.25d → -21d |
| 40 | اتصال نرم‌افزار و وب‌سایت به پایگاه داده | 2023-03-05 → 2023-03-14 (+9d) | 2023-03-29 → 2023-04-09 (+11d) |  |  | -14.25d → -21d |

## Version 6 (data date 2023-03-26, saved 2022-07-22, file Phase 3 - current6.mpp)

Last finish stays 2023-05-22. Complete tasks 23 → 29.

Changed:

| ID | Task | Start | Finish | Duration | Complete | Total float | Other |
| --- | --- | --- | --- | --- | --- | --- | --- |
| 18 | **راه‌اندازی پلتفرم** |  | 2023-04-11 → 2023-04-30 (+19d) | 236.25d → 248.75d | 86% → 93% | 29.75d → 17.25d |  |
| 22 | **طراحی نرم‌افزار** |  | 2022-12-25 A |  | 96% → 100% | 108d → none |  |
| 25 | API طراحی |  | 2022-11-05 A |  | 83% → 100% | 149.25d → none |  |
| 33 | **تست نرم‌افزار** |  | 2023-02-07 A |  | 76% → 100% | 73.25d → none |  |
| 35 | تست یکپارچگی |  | 2023-01-18 A |  | 70% → 100% | 88.75d → none |  |
| 37 | (UAT) آزمون پذیرش کاربر |  | 2023-02-07 A |  | 48% → 100% | -21d → none |  |
| 38 | **یکپارچه‌سازی نرم‌افزار و وب‌سایت** | 2023-02-07 A | 2023-04-09 → 2023-04-30 (+21d) | 41d → 56d | 0% → 55% | -21d → 17.25d |  |
| 39 | پیاده‌سازی هویت بصری یکپارچه و مشخص‌شده | 2023-02-07 A | 2023-03-14 A |  | 0% → 100% | -21d → none |  |
| 40 | اتصال نرم‌افزار و وب‌سایت به پایگاه داده | 2023-03-14 A | 2023-04-09 → 2023-04-30 (+21d) | 15d → 30d | 0% → 17% | -21d → 17.25d |  |
| 41 | **اجرا** | 2023-03-06 A | 2023-04-11 → 2023-04-24 (+13d) | 24d → 31d | 0% → 35% | 0d → 17.75d |  |
| 42 | برگزاری جلسه با کادر اجرایی پروژه | 2023-03-06 A | 2023-03-06 A |  | 0% → 100% | 0.5d → none |  |
| 43 | اجرای اولیه در بازارهای خرد | 2023-03-06 A | 2023-03-19 A |  | 0% → 100% | -21d → none |  |
| 44 | اجرای ثانویه در بازار اصلی | 2023-03-25 A | 2023-04-11 → 2023-04-24 (+13d) | 13d → 20d | 0% → 3% | 0d → 17.75d | constraint must finish on 2023-04-11 → none |
| 47 | **بازاریابی** | 2023-03-25 A |  |  | 0% → 2% |  |  |
| 48 | **تحقیقات بازار** | 2023-03-25 A |  |  | 0% → 5% |  |  |
| 49 | تحلیل رقبا | 2023-03-25 A |  |  | 0% → 10% |  |  |

## Version 7 (data date 2023-05-11, saved 2022-07-22, file Phase 3 (ii).mpp)

Last finish stays 2023-05-22. Complete tasks 29 → 35.

Changed:

| ID | Task | Start | Finish | Duration | Complete | Total float | Other |
| --- | --- | --- | --- | --- | --- | --- | --- |
| 1 | **برنامه‌ریزی** |  | 2022-05-01 A → 2022-04-25 A (-6d) | 28.25d → 24d |  |  |  |
| 4 | زمان‌سنجی فعالیت‌ها |  | 2022-04-13 A → 2022-04-10 A (-3d) | 10d → 7d |  |  | constraint none → must finish on 2022-04-10 |
| 6 | **برنامه‌ریزی منابع** |  | 2022-05-01 A → 2022-04-25 A (-6d) | 23.25d → 19d |  |  |  |
| 8 | برنامه‌ریزی منابع انسانی | 2022-04-21 A → 2022-04-18 A (-3d) | 2022-05-01 A → 2022-04-25 A (-6d) | 7d → 5d |  |  | constraint none → must finish on 2022-04-25 |
| 9 | **فعالیت‌های حقوقی** |  | 2022-09-22 A → 2022-09-10 A (-12d) | 131.5d → 122d |  |  |  |
| 10 | **کسب مجوزهای بانکی** | 2022-07-08 A → 2022-06-12 A (-26d) | 2022-09-19 A → 2022-08-16 A (-34d) | 55d → 50d |  |  |  |
| 11 | کسب مجوز فعالیت از بانک مرکزی | 2022-07-08 A → 2022-06-12 A (-26d) | 2022-08-24 A → 2022-07-20 A (-35d) | 35d → 30d |  |  |  |
| 12 | عضویت در شبکه شتاب و شاپرک | 2022-08-24 A → 2022-07-21 A (-34d) | 2022-09-19 A → 2022-08-16 A (-34d) |  |  |  |  |
| 13 | **کسب مجوزهای تجاری** |  | 2022-09-22 A → 2022-09-10 A (-12d) | 131.5d → 122d |  |  |  |
| 14 | ثبت برند |  | 2022-07-04 A → 2022-06-12 A (-22d) | 70d → 2mo |  |  |  |
| 15 | کسب نماد اعتماد الکترونیکی | 2022-09-04 A → 2022-08-17 A (-18d) | 2022-09-22 A → 2022-09-04 A (-18d) |  |  |  |  |
| 16 | کسب مجوز کشوری کسب‌وکار مجازی | 2022-08-29 A → 2022-08-17 A (-12d) | 2022-09-22 A → 2022-09-10 A (-12d) |  |  |  |  |
| 18 | **راه‌اندازی پلتفرم** |  | 2023-04-30 → 2023-04-11 A (-19d) | 248.75d → 236.25d | 93% → 100% | 17.25d → none |  |
| 19 | **طراحی وب‌سایت** |  | 2022-10-16 A → 2022-09-22 A (-24d) | 101d → 85d |  |  |  |
| 21 | طراحی گرافیکی وب‌سایت | 2022-07-01 A → 2022-06-29 A (-2d) | 2022-10-16 A → 2022-09-22 A (-24d) | 80d → 2.5mo |  |  |  |
| 22 | **طراحی نرم‌افزار** |  | 2022-12-25 A → 2022-12-06 A (-19d) | 158d → 143d |  |  |  |
| 25 | API طراحی | 2022-07-29 A → 2022-07-26 A (-3d) | 2022-11-05 A → 2022-10-19 A (-17d) | 60d → 50d |  |  |  |
| 26 | UI/UX & GUI طراحی |  | 2022-12-25 A → 2022-12-06 A (-19d) | 80d → 2.5mo |  |  |  |
| 27 | **امنیت** |  | 2022-12-06 A → 2022-11-06 A (-30d) | 64d → 39d |  |  |  |
| 28 | طراحی سیستم ارسال رمز پویا | 2022-09-19 A → 2022-09-15 A (-4d) | 2022-10-11 A → 2022-10-08 A (-3d) |  |  |  |  |
| 29 | Two factor authentication طراحی پروتکل |  | 2022-10-08 A → 2022-10-01 A (-7d) | 15d → 10d |  |  |  |
| 30 | طراحی سیستم احراز هویت |  | 2022-10-24 A → 2022-10-15 A (-9d) | 27d → 20d |  |  | constraint none → must finish on 2022-10-15 |
| 32 | تست امنیت |  | 2022-12-06 A → 2022-11-06 A (-30d) | 35d → 10d |  |  | constraint none → must finish on 2022-11-06 |
| 33 | **تست نرم‌افزار** | 2022-12-25 A → 2022-12-06 A (-19d) | 2023-02-07 A → 2023-01-10 A (-28d) | 34.75d → 28d |  |  |  |
| 34 | Unit Testing | 2022-12-25 A → 2022-12-06 A (-19d) | 2023-01-03 A → 2022-12-14 A (-20d) |  |  |  |  |
| 35 | تست یکپارچگی | 2023-01-07 A → 2022-12-14 A (-24d) | 2023-01-18 A → 2022-12-24 A (-25d) | 10d → 7d |  |  |  |
| 36 | System Testing | 2023-01-11 A → 2022-12-24 A (-18d) | 2023-01-21 A → 2023-01-02 A (-19d) |  |  |  |  |
| 37 | (UAT) آزمون پذیرش کاربر | 2023-01-25 A → 2023-01-02 A (-23d) | 2023-02-07 A → 2023-01-10 A (-28d) | 10d → 7d |  |  |  |
| 38 | **یکپارچه‌سازی نرم‌افزار و وب‌سایت** | 2023-02-07 A → 2023-01-10 A (-28d) | 2023-04-30 → 2023-03-05 A (-56d) | 56d → 41.25d | 55% → 100% | 17.25d → none |  |
| 39 | پیاده‌سازی هویت بصری یکپارچه و مشخص‌شده | 2023-02-07 A → 2023-01-10 A (-28d) | 2023-03-14 A → 2023-02-13 A (-29d) |  |  |  |  |
| 40 | اتصال نرم‌افزار و وب‌سایت به پایگاه داده | 2023-03-14 A → 2023-02-14 A (-28d) | 2023-04-30 → 2023-03-05 A (-56d) | 30d → 15d | 17% → 100% | 17.25d → none |  |
| 41 | **اجرا** |  | 2023-04-24 → 2023-04-11 A (-13d) | 31d → 24d | 35% → 100% | 17.75d → none |  |
| 44 | اجرای ثانویه در بازار اصلی |  | 2023-04-24 → 2023-04-11 A (-13d) | 20d → 13d | 3% → 100% | 17.75d → none | constraint none → must finish on 2023-04-11 |
| 45 | پایان فاز راه­اندازی و اجرای پلتفرم | 2023-05-06 A | 2023-05-06 A |  | 0% → 100% | 13.5d → none |  |
| 46 | تهیه گزارشات مالی پروژه | 2023-05-06 A | 2023-05-06 A |  | 0% → 100% | 13.5d → none |  |
| 47 | **بازاریابی** |  |  |  | 2% → 99% |  |  |
| 48 | **تحقیقات بازار** |  | 2023-04-20 A |  | 5% → 100% | 3.25d → none |  |
| 49 | تحلیل رقبا |  | 2023-04-08 A |  | 10% → 100% | 3.25d → none |  |
| 50 | بررسی مشتریان هدف | 2023-04-08 A | 2023-04-20 A |  | 0% → 100% | 3.25d → none |  |
| 51 | **تبلیغات** | 2023-04-20 A |  |  | 0% → 98% |  |  |
| 52 | تبلیغات مجازی | 2023-04-20 A |  |  | 0% → 98% |  |  |
| 53 | تبلیغات محیطی | 2023-04-20 A |  |  | 0% → 98% |  |  |

## Version 8 (data date 2023-05-26, saved 2022-07-22, file Phase 3 - current7.mpp)

Last finish 2023-05-22 → 2023-05-24 (+2d). Complete tasks 35 → 38.

Changed:

| ID | Task | Start | Finish | Duration | Complete | Total float | Other |
| --- | --- | --- | --- | --- | --- | --- | --- |
| 1 | **برنامه‌ریزی** |  | 2022-04-25 A → 2022-05-01 A (+6d) | 24d → 28.25d |  |  |  |
| 4 | زمان‌سنجی فعالیت‌ها |  | 2022-04-10 A → 2022-04-13 A (+3d) | 7d → 10d |  |  | constraint must finish on 2022-04-10 → none |
| 6 | **برنامه‌ریزی منابع** |  | 2022-04-25 A → 2022-05-01 A (+6d) | 19d → 23.25d |  |  |  |
| 8 | برنامه‌ریزی منابع انسانی | 2022-04-18 A → 2022-04-21 A (+3d) | 2022-04-25 A → 2022-05-01 A (+6d) | 5d → 7d |  |  | constraint must finish on 2022-04-25 → none |
| 9 | **فعالیت‌های حقوقی** |  | 2022-09-10 A → 2022-09-22 A (+12d) | 122d → 131.5d |  |  |  |
| 10 | **کسب مجوزهای بانکی** | 2022-06-12 A → 2022-07-08 A (+26d) | 2022-08-16 A → 2022-09-19 A (+34d) | 50d → 55d |  |  |  |
| 11 | کسب مجوز فعالیت از بانک مرکزی | 2022-06-12 A → 2022-07-08 A (+26d) | 2022-07-20 A → 2022-08-24 A (+35d) | 30d → 35d |  |  |  |
| 12 | عضویت در شبکه شتاب و شاپرک | 2022-07-21 A → 2022-08-24 A (+34d) | 2022-08-16 A → 2022-09-19 A (+34d) |  |  |  |  |
| 13 | **کسب مجوزهای تجاری** |  | 2022-09-10 A → 2022-09-22 A (+12d) | 122d → 131.5d |  |  |  |
| 14 | ثبت برند |  | 2022-06-12 A → 2022-07-04 A (+22d) | 2mo → 70d |  |  |  |
| 15 | کسب نماد اعتماد الکترونیکی | 2022-08-17 A → 2022-09-04 A (+18d) | 2022-09-04 A → 2022-09-22 A (+18d) |  |  |  |  |
| 16 | کسب مجوز کشوری کسب‌وکار مجازی | 2022-08-17 A → 2022-08-29 A (+12d) | 2022-09-10 A → 2022-09-22 A (+12d) |  |  |  |  |
| 18 | **راه‌اندازی پلتفرم** |  | 2023-04-11 A → 2023-04-30 A (+19d) | 236.25d → 248.75d |  |  |  |
| 19 | **طراحی وب‌سایت** |  | 2022-09-22 A → 2022-10-16 A (+24d) | 85d → 101d |  |  |  |
| 21 | طراحی گرافیکی وب‌سایت | 2022-06-29 A → 2022-07-01 A (+2d) | 2022-09-22 A → 2022-10-16 A (+24d) | 2.5mo → 80d |  |  |  |
| 22 | **طراحی نرم‌افزار** |  | 2022-12-06 A → 2022-12-25 A (+19d) | 143d → 158d |  |  |  |
| 25 | API طراحی | 2022-07-26 A → 2022-07-29 A (+3d) | 2022-10-19 A → 2022-11-05 A (+17d) | 50d → 60d |  |  |  |
| 26 | UI/UX & GUI طراحی |  | 2022-12-06 A → 2022-12-25 A (+19d) | 2.5mo → 80d |  |  |  |
| 27 | **امنیت** |  | 2022-11-06 A → 2022-12-06 A (+30d) | 39d → 64d |  |  |  |
| 28 | طراحی سیستم ارسال رمز پویا | 2022-09-15 A → 2022-09-19 A (+4d) | 2022-10-08 A → 2022-10-11 A (+3d) |  |  |  |  |
| 29 | Two factor authentication طراحی پروتکل |  | 2022-10-01 A → 2022-10-08 A (+7d) | 10d → 15d |  |  |  |
| 30 | طراحی سیستم احراز هویت |  | 2022-10-15 A → 2022-10-24 A (+9d) | 20d → 27d |  |  | constraint must finish on 2022-10-15 → none |
| 32 | تست امنیت |  | 2022-11-06 A → 2022-12-06 A (+30d) | 10d → 35d |  |  | constraint must finish on 2022-11-06 → none |
| 33 | **تست نرم‌افزار** | 2022-12-06 A → 2022-12-25 A (+19d) | 2023-01-10 A → 2023-02-07 A (+28d) | 28d → 34.75d |  |  |  |
| 34 | Unit Testing | 2022-12-06 A → 2022-12-25 A (+19d) | 2022-12-14 A → 2023-01-03 A (+20d) |  |  |  |  |
| 35 | تست یکپارچگی | 2022-12-14 A → 2023-01-07 A (+24d) | 2022-12-24 A → 2023-01-18 A (+25d) | 7d → 10d |  |  |  |
| 36 | System Testing | 2022-12-24 A → 2023-01-11 A (+18d) | 2023-01-02 A → 2023-01-21 A (+19d) |  |  |  |  |
| 37 | (UAT) آزمون پذیرش کاربر | 2023-01-02 A → 2023-01-25 A (+23d) | 2023-01-10 A → 2023-02-07 A (+28d) | 7d → 10d |  |  |  |
| 38 | **یکپارچه‌سازی نرم‌افزار و وب‌سایت** | 2023-01-10 A → 2023-02-07 A (+28d) | 2023-03-05 A → 2023-04-30 A (+56d) | 41.25d → 56d |  |  |  |
| 39 | پیاده‌سازی هویت بصری یکپارچه و مشخص‌شده | 2023-01-10 A → 2023-02-07 A (+28d) | 2023-02-13 A → 2023-03-14 A (+29d) |  |  |  |  |
| 40 | اتصال نرم‌افزار و وب‌سایت به پایگاه داده | 2023-02-14 A → 2023-03-14 A (+28d) | 2023-03-05 A → 2023-04-30 A (+56d) | 15d → 30d |  |  |  |
| 41 | **اجرا** |  | 2023-04-11 A → 2023-04-24 A (+13d) | 24d → 31d |  |  |  |
| 44 | اجرای ثانویه در بازار اصلی |  | 2023-04-11 A → 2023-04-24 A (+13d) | 13d → 20d |  |  | constraint must finish on 2023-04-11 → none |
| 47 | **بازاریابی** |  | 2023-05-11 A |  | 99% → 100% | 3.25d → none |  |
| 48 | **تحقیقات بازار** |  | 2023-04-20 A → 2023-04-25 A (+5d) | 20d → 22d |  |  |  |
| 50 | بررسی مشتریان هدف |  | 2023-04-20 A → 2023-04-25 A (+5d) | 10d → 12d |  |  |  |
| 51 | **تبلیغات** |  | 2023-05-11 A |  | 98% → 100% | 3.25d → none |  |
| 52 | تبلیغات مجازی |  | 2023-05-11 A |  | 98% → 100% | 3.25d → none |  |
| 53 | تبلیغات محیطی |  | 2023-05-11 A |  | 98% → 100% | 3.25d → none |  |
| 54 | **خاتمه پروژه** | 2023-05-15 A | 2023-05-22 → 2023-05-24 A (+2d) | 5d → 7d | 0% → 100% | 0d → none |  |
| 55 | جمع‌بندی و جمع‌آوری گزارشات | 2023-05-15 A | 2023-05-22 → 2023-05-24 A (+2d) | 5d → 7d | 0% → 100% | 0d → none | constraint must finish on 2023-05-22 → none |
